# Gantt_chart

Schedule from MS Project, 2009-09-23 to 2010-01-09, costs in $.
University of Information Technology
Project management for "Easy Project Management" system.

## Calendars

- HTM Group Calendar: Mon-Sat 08:00-12:00, 13:00-17:00; Sun off.

## Resources

| Resource | Group | Rate | Cost per use | Notes |
| --- | --- | --- | --- | --- |
| HưngVN | Human Resource | 4 | 1 | Leader or PM of EPM system. |
| HảiLD | Human Resource | 2 | 0.75 |  |
| MẫnVHT | Human Resource | 2 | 0.75 |  |
| ToànNM | Human Resource | 2 | 0.75 |  |

## Schedule

| ID | WBS | Task | Type | Duration | Start | Finish | Predecessors | Total slack | Constraint | Resources | Work | Cost |
| --- | --- | --- | --- | --- | --- | --- | --- | --- | --- | --- | --- | --- |
| 1 | 1 | **Preparation (Chuẩn bị)** |  | 15d? | 2009-09-23 | 2009-10-09 |  | 0d |  |  | 1032h | 2,530.5 |
| 2 | 1.1 | **Build Team** |  | 4d? | 2009-09-23 | 2009-09-26 |  | 0d |  | HảiLD; ToànNM; HưngVN; MẫnVHT | 128h | 323.25 |
| 3 | 1.1.1 | Choose members |  | 3d | 2009-09-23 | 2009-09-25 |  | 0d |  |  |  |  |
| 4 | 1.1.2 | Choose team leader |  | 1d? | 2009-09-26 | 2009-09-26 | 3 | 0d |  |  |  |  |
| 5 | 1.2 | **Traning** |  | 11d? | 2009-09-28 | 2009-10-09 | 2 | 0d |  | HảiLD; ToànNM; HưngVN; MẫnVHT | 888h | 2,142.25 |
| 6 | 1.2.1 | Business Process |  | 3d | 2009-09-28 | 2009-09-30 |  | 0d | finish no earlier than 2009-09-24 | HưngVN | 24h | 97 |
| 7 | 1.2.2 | Analyse sample apps |  | 3d | 2009-09-28 | 2009-09-30 |  | 0d | finish no earlier than 2009-09-26 | HảiLD; MẫnVHT | 48h | 97.5 |
| 8 | 1.2.3 | **Technical training** |  | 8d? | 2009-10-01 | 2009-10-09 | 6, 7 | 0d |  | HảiLD; ToànNM; HưngVN; MẫnVHT | 464h | 1,064.5 |
| 9 | 1.2.3.1 | ASP.NET |  | 4d? | 2009-10-01 | 2009-10-05 |  | 0d | finish no earlier than 2009-09-30 | HảiLD; ToànNM; MẫnVHT | 96h | 194.25 |
| 10 | 1.2.3.2 | ASP.NET MVC Framework |  | 4d? | 2009-10-06 | 2009-10-09 | 9 | 0d | finish no earlier than 2009-10-03 | HảiLD; ToànNM; MẫnVHT | 96h | 194.25 |
| 11 | 1.2.3.3 | LINQ |  | 2d? | 2009-10-06 | 2009-10-07 | 9 | 2d | finish no earlier than 2009-10-05 | MẫnVHT | 16h | 32.75 |
| 12 | 1.3 | Planning |  | 2d? | 2009-10-06 | 2009-10-07 | 2 | 2d | finish no earlier than 2009-10-07 | HưngVN | 16h | 65 |
| 13 | 2 | **Inception (Khởi động)** |  | 9d | 2009-10-10 | 2009-10-20 | 1 | 0d |  |  | 144h | 344 |
| 14 | 2.1 | Requirements gathering |  | 3d | 2009-10-10 | 2009-10-13 |  | 0d | finish no earlier than 2009-10-09 | HưngVN; HảiLD | 48h | 145.75 |
| 15 | 2.2 | **Requirements specification** |  | 6d | 2009-10-14 | 2009-10-20 | 14 | 0d |  |  | 96h | 195 |
| 16 | 2.2.1 | Use-cases |  | 3d | 2009-10-14 | 2009-10-16 |  | 0d | start no earlier than 2009-10-10 | HảiLD; MẫnVHT | 48h | 97.5 |
| 17 | 2.2.2 | Sequence Diagrams |  | 3d | 2009-10-17 | 2009-10-20 | 16 | 0d | finish no earlier than 2009-10-13 | ToànNM; MẫnVHT | 48h | 97.5 |
| 18 | 2.3 | Review and Validate Requirements | milestone | 0d | 2009-10-20 | 2009-10-20 | 15 | 0d | finish no earlier than 2009-10-15 | HảiLD; HưngVN; MẫnVHT; ToànNM |  | 3.25 |
| 19 | 3 | **Elaboration: Analyse and Design** |  | 19d? | 2009-10-21 | 2009-11-11 | 13 | 0d |  |  | 376h | 914.5 |
| 20 | 3.1 | **Class Diagram** |  | 11d | 2009-10-21 | 2009-11-02 | 18 | 0d |  |  | 224h | 503.75 |
| 21 | 3.1.1 | Identify Objects |  | 2d | 2009-10-21 | 2009-10-22 |  | 0d |  | HảiLD; MẫnVHT | 32h | 65.5 |
| 22 | 3.1.2 | Objects Relationship |  | 2d | 2009-10-23 | 2009-10-24 | 21 | 0d |  | MẫnVHT; ToànNM | 32h | 65.5 |
| 23 | 3.1.3 | Identify Methods and Properties of Objects |  | 4d | 2009-10-26 | 2009-10-29 | 22 | 0d |  | HảiLD; ToànNM | 64h | 129.5 |
| 24 | 3.1.4 | Review and Evaluate Class Diagram |  | 3d | 2009-10-30 | 2009-11-02 | 23 | 0d |  | HảiLD; HưngVN; MẫnVHT; ToànNM | 96h | 243.25 |

Notes:
- 18: Release Requirement 1.0

| ID | WBS | Task | Type | Duration | Start | Finish | Predecessors | Total slack | Free slack | Constraint | Resources | Work | Cost |
| --- | --- | --- | --- | --- | --- | --- | --- | --- | --- | --- | --- | --- | --- |
| 25 | 3.2 | **DB Design** |  | 8d? | 2009-11-03 | 2009-11-11 | 20 | 0d |  |  |  | 104h | 310.75 |
| 26 | 3.2.1 | Data Flow Diagram |  | 2d | 2009-11-03 | 2009-11-04 |  | 0d |  |  | HảiLD; HưngVN | 32h | 97.75 |
| 27 | 3.2.2 | Logical Diagram (ERD) |  | 2d | 2009-11-05 | 2009-11-06 | 26 | 0d |  |  | HảiLD | 16h | 32.75 |
| 28 | 3.2.3 | Physical Diagram - MSSQL Server Express 2005 |  | 3d | 2009-11-07 | 2009-11-10 | 27 | 0d |  |  | HưngVN | 24h | 97 |
| 29 | 3.2.4 | Review DB |  | 1d? | 2009-11-11 | 2009-11-11 | 28 | 0d |  |  | HảiLD; HưngVN; MẫnVHT; ToànNM | 32h | 83.25 |
| 30 | 3.3 | User Interface Design |  | 6d | 2009-10-21 | 2009-10-27 | 18 | 13d |  | finish no earlier than 2009-10-19 | ToànNM | 48h | 96.75 |
| 31 | 3.4 | Design review and evaluation | milestone | 0d | 2009-11-11 | 2009-11-11 | 20, 25, 30 | 0d |  |  | HảiLD; HưngVN; MẫnVHT; ToànNM |  | 3.25 |
| 32 | 4 | **Construction (Thực hiện)** |  | 42d? | 2009-11-12 | 2009-12-30 | 13, 19 | 0d |  |  |  | 856h | 2,207.5 |
| 33 | 4.1 | Code Convention |  | 2d | 2009-11-12 | 2009-11-13 |  | 0d |  | finish no earlier than 2009-10-26 | HưngVN | 16h | 65 |
| 34 | 4.2 | **System implementation** |  | 18d? | 2009-11-14 | 2009-12-04 | 33 | 0d |  |  |  | 264h | 648.75 |
| 35 | 4.2.1 | **Project Administration** |  | 10d? | 2009-11-14 | 2009-11-25 |  | 0d |  |  |  | 144h | 356.75 |
| 36 | 4.2.1.1 | Projects of Each User |  | 3d | 2009-11-14 | 2009-11-17 |  | 0d |  | finish no earlier than 2009-10-28 | HảiLD | 24h | 48.75 |
| 37 | 4.2.1.2 | Milestones of Project |  | 2d? | 2009-11-18 | 2009-11-19 | 36 | 2d | 0d | start no earlier than 2009-10-29 | HảiLD | 16h | 32.75 |
| 38 | 4.2.1.3 | Tasklists and Tasks |  | 3d | 2009-11-20 | 2009-11-23 | 37 | 2d |  | finish no earlier than 2009-11-02 | HảiLD | 24h | 48.75 |
| 39 | 4.2.1.4 | Calendar |  | 4d | 2009-11-18 | 2009-11-21 | 36 | 0d |  | finish no earlier than 2009-10-31 | HưngVN | 32h | 129 |
| 40 | 4.2.1.5 | Time-tracker |  | 3d | 2009-11-18 | 2009-11-20 | 36 | 4d |  |  | ToànNM | 24h | 48.75 |
| 41 | 4.2.1.6 | Dashboard |  | 3d | 2009-11-23 | 2009-11-25 | 36, 39 | 0d |  |  | MẫnVHT | 24h | 48.75 |
| 42 | 4.2.2 | **User Administration** |  | 3d | 2009-11-26 | 2009-11-28 | 35 | 0d |  |  |  | 40h | 129.75 |
| 43 | 4.2.2.1 | Manage Users of Each Project |  | 2d | 2009-11-26 | 2009-11-27 |  | 1d |  |  | ToànNM | 16h | 32.75 |
| 44 | 4.2.2.2 | Role & Authorization |  | 3d | 2009-11-26 | 2009-11-28 |  | 0d |  |  | HưngVN | 24h | 97 |
| 45 | 4.2.3 | **System Administration** |  | 5d | 2009-11-30 | 2009-12-04 | 35, 42 | 0d |  |  |  | 40h | 81.5 |
| 46 | 4.2.3.1 | System Config |  | 2d | 2009-11-30 | 2009-12-01 |  | 0d |  |  | MẫnVHT | 16h | 32.75 |
| 47 | 4.2.3.2 | Manage All Projects & Users |  | 3d | 2009-12-02 | 2009-12-04 | 46 | 0d |  |  | MẫnVHT | 24h | 48.75 |
| 48 | 4.2.4 | Improve GUI |  | 5d | 2009-11-18 | 2009-11-23 | 36 | 10d |  |  | ToànNM | 40h | 80.75 |

Notes:
- 31: Complete phase 2: Class, DB and GUI design.

| ID | WBS | Task | Type | Duration | Start | Finish | Predecessors | Total slack | Free slack | Constraint | Resources | Work | Cost |
| --- | --- | --- | --- | --- | --- | --- | --- | --- | --- | --- | --- | --- | --- |
| 49 | 4.3 | **Technical documentation** |  | 10d | 2009-11-26 | 2009-12-07 |  | 6d | 0d |  |  | 48h | 130.5 |
| 50 | 4.3.1 | Project API Reference |  | 2d | 2009-11-26 | 2009-11-27 | 35 | 14d |  |  | HảiLD | 16h | 32.75 |
| 51 | 4.3.2 | User & Role API Reference |  | 2d | 2009-11-30 | 2009-12-01 | 42 | 11d |  |  | HưngVN | 16h | 65 |
| 52 | 4.3.3 | System Config API Reference |  | 2d | 2009-12-05 | 2009-12-07 | 45 | 6d |  |  | MẫnVHT | 16h | 32.75 |
| 53 | 4.4 | **User documentation** |  | 4d | 2009-12-08 | 2009-12-11 | 49 | 6d |  |  |  | 96h | 259.25 |
| 54 | 4.4.1 | User Guide |  | 4d | 2009-12-08 | 2009-12-11 |  | 6d |  |  | ToànNM; HưngVN | 64h | 193.75 |
| 55 | 4.4.2 | FAQ |  | 2d | 2009-12-08 | 2009-12-09 |  | 8d |  |  | HảiLD; MẫnVHT | 32h | 65.5 |
| 56 | 4.5 | **Testing** |  | 10d | 2009-12-05 | 2009-12-16 | 34 | 0d |  |  |  | 144h | 325.5 |
| 57 | 4.5.1 | Test planning |  | 2d | 2009-12-05 | 2009-12-07 |  | 0d |  |  | HưngVN | 16h | 65 |
| 58 | 4.5.2 | Test Workflow |  | 3d | 2009-12-08 | 2009-12-10 | 57 | 0d |  |  | HảiLD; ToànNM | 48h | 97.5 |
| 59 | 4.5.3 | Test code implementation |  | 3d | 2009-12-11 | 2009-12-14 | 58 | 0d |  |  | HảiLD; MẫnVHT | 48h | 97.5 |
| 60 | 4.5.4 | Test performance |  | 2d | 2009-12-15 | 2009-12-16 | 59 | 0d |  |  | ToànNM; MẫnVHT | 32h | 65.5 |
| 61 | 4.6 | Implementation review and evaluation |  | 2d | 2009-12-17 | 2009-12-18 | 34, 56 | 0d |  |  | HảiLD; HưngVN; MẫnVHT; ToànNM | 64h | 163.25 |
| 62 | 4.7 | Release beta version 1.0 | milestone | 0d | 2009-12-18 | 2009-12-18 | 34, 53, 56, 61 | 0d |  | start no earlier than 2009-11-25 | HảiLD; HưngVN; MẫnVHT; ToànNM |  | 3.25 |
| 63 | 4.8 | **Feedback & Response** |  | 10d | 2009-12-19 | 2009-12-30 | 62 | 0d |  |  |  | 224h | 611.25 |
| 64 | 4.8.1 | Receive Feedbacks |  | 10d | 2009-12-19 | 2009-12-30 |  | 0d |  |  | HưngVN | 80h | 321 |
| 65 | 4.8.2 | Improve and Fix bugs |  | 6d | 2009-12-19 | 2009-12-25 |  | 4d |  |  | HảiLD; MẫnVHT; ToànNM | 144h | 290.25 |
| 66 | 4.9 | Release version RC 1.0 | milestone | 0d | 2009-12-30 | 2009-12-30 | 63 | 0d |  | start no earlier than 2009-12-07 | ToànNM |  | 0.75 |
| 67 | 5 | **Transition (Triển khai)** |  | 4d | 2009-12-30 | 2010-01-04 | 32 | 0d |  |  |  | 128h | 324 |
| 68 | 5.1 | Release final packaging: official 1.0 | milestone | 0d | 2009-12-30 | 2009-12-30 | 66 | 4d |  |  | MẫnVHT |  | 0.75 |
| 69 | 5.2 | Finish Documentation |  | 4d | 2009-12-31 | 2010-01-04 | 32 | 0d |  |  | HảiLD; HưngVN; MẫnVHT; ToànNM | 128h | 323.25 |
| 70 | 6 | **Reflection (Nhận xét, đánh giá)** |  | 3d? | 2010-01-05 | 2010-01-07 | 67 | 2d |  |  |  | 32h | 99.5 |
| 71 | 6.1 | Cost Report |  | 1d? | 2010-01-05 | 2010-01-05 |  | 2d | 0d |  | HưngVN | 8h | 33 |
| 72 | 6.2 | Product Evaluation |  | 1d | 2010-01-06 | 2010-01-06 | 71 | 2d | 0d |  | HảiLD; MẫnVHT | 16h | 33.5 |
| 73 | 6.3 | Lessons Learned |  | 1d | 2010-01-07 | 2010-01-07 | 71, 72 | 2d |  |  | HưngVN | 8h | 33 |
| 74 | 7 | Maintenance (Bảo trì) |  | 5d | 2010-01-05 | 2010-01-09 | 67 | 0d |  |  | HảiLD; HưngVN; MẫnVHT; ToànNM | 160h | 403.25 |
